# Mashup Platform

Schedule from MS Project, 2011-08-19 to 2012-01-08.
Frost-RL

## Calendars

- Standard: Mon-Fri 08:00-12:00, 13:00-17:00; Sat-Sun 08:00-12:00, 13:00-14:00. Exceptions (off unless hours are given): 2011-08-20 08:00-12:00, 13:00-17:00.

## Resources

| Resource |
| --- |
| Die Häkler |
| Malte Wintner |
| Joel Poyet |
| Jan Wild |
| Alexander Matt |
| Projektleiter |
| Joël Poyet |

## Schedule

| ID | WBS | Task | Type | Duration | Start | Finish | Predecessors | Total slack | Free slack | Constraint | Resources | Work |
| --- | --- | --- | --- | --- | --- | --- | --- | --- | --- | --- | --- | --- |
| 1 | 1 | **Projektinitialisierung** |  | 25.25d | 2011-08-19 | 2011-09-15 |  | -0.25d | 0d |  |  | 417.6h |
| 2 | 1.1 | **Projektidee** |  | 8.25d | 2011-08-19 | 2011-08-27 |  | 0d |  |  |  | 57.6h |
| 3 | 1.1.1 | Kick-Off-Meeting | milestone | 0d | 2011-08-19 | 2011-08-19 |  | 0d |  | must start on 2011-08-19 | Die Häkler |  |
| 4 | 1.1.2 | Brainstorming |  | 7.2d | 2011-08-20 | 2011-08-27 | 7 | -0.2d | 0d |  | Die Häkler | 57.6h |
| 5 | 1.1.3 | Fixierung | milestone | 0d | 2011-08-27 | 2011-08-27 | 4 | 0d |  | must finish on 2011-08-27 | Die Häkler |  |
| 6 | 1.2 | **Kommunikation** |  | 7d | 2011-08-19 | 2011-08-26 |  | -0.2d | 0d |  |  | 112h |
| 7 | 1.2.1 | Kommunikationsplattform einrichten |  | 1d | 2011-08-19 | 2011-08-19 |  | -0.2d | 0d |  | Malte Wintner | 8h |
| 8 | 1.2.2 | Dokumentenablage einrichten |  | 6d | 2011-08-19 | 2011-08-25 |  | 18d | 0d |  | Jan Wild | 48h |
| 9 | 1.2.3 | Code Repository einrichten |  | 6d | 2011-08-19 | 2011-08-25 |  | 18d | 0d |  | Jan Wild | 48h |
| 10 | 1.2.4 | Installation auf Arbeitsrechnern |  | 1d | 2011-08-25 | 2011-08-26 | 8, 9 | 18d |  |  | Die Häkler | 8h |
| 11 | 1.3 | **Coderichtlinien** |  | 7d | 2011-08-19 | 2011-08-26 |  | 18d |  |  |  | 56h |
| 12 | 1.3.1 | Definition |  | 3d | 2011-08-19 | 2011-08-22 |  | 18d | 0d |  | Jan Wild | 24h |
| 13 | 1.3.2 | Begründung |  | 4d | 2011-08-22 | 2011-08-26 | 12 | 18d |  |  | Jan Wild | 32h |
| 14 | 1.4 | **Projektauftrag** |  | 10d | 2011-08-28 | 2011-09-08 | 2 | -0.25d | 0d |  |  | 80h |
| 15 | 1.4.1 | Erstellung |  | 4d | 2011-08-28 | 2011-09-01 | 5 | -0.25d | 0d |  | Joël Poyet | 32h |
| 16 | 1.4.2 | Besprechung im Team |  | 1d | 2011-09-01 | 2011-09-02 | 15 | -0.25d | 0d |  | Die Häkler | 8h |
| 17 | 1.4.3 | Überarbeitung |  | 5d | 2011-09-02 | 2011-09-08 | 16 | 6.75d |  |  | Joël Poyet | 40h |
| 18 | 1.5 | **Lösungsvarianten** |  | 6d | 2011-09-02 | 2011-09-09 | 16 | -0.25d | 0d |  |  | 48h |
| 19 | 1.5.1 | Evaluierung von verschiedenen Varianten |  | 2d | 2011-09-02 | 2011-09-05 | 16 | -0.25d | 0d |  | Malte Wintner | 16h |
| 20 | 1.5.2 | Nutzwertanalyse erstellen |  | 2d | 2011-09-05 | 2011-09-07 | 19 | -0.25d | 0d |  | Malte Wintner | 16h |
| 21 | 1.5.3 | Begründeten Lösungsansatz verfassen |  | 2d | 2011-09-07 | 2011-09-09 | 20 | -0.25d | 0d |  | Malte Wintner | 16h |
| 22 | 1.6 | **Software Engineering Modell** |  | 2d | 2011-09-07 | 2011-09-09 | 20 | -0.25d | 0d |  |  | 16h |
| 23 | 1.6.1 | Bevorzugtes Modell aussuchen |  | 2d | 2011-09-07 | 2011-09-09 | 20 | -0.25d | 0d |  | Die Häkler | 16h |
| 24 | 1.6.2 | Einigung im Team | milestone | 0d | 2011-09-09 | 2011-09-09 | 23 | -0.25d | 0d |  | Die Häkler |  |

| ID | WBS | Task | Type | Duration | Start | Finish | Predecessors | Total slack | Free slack | Constraint | Resources | Work |
| --- | --- | --- | --- | --- | --- | --- | --- | --- | --- | --- | --- | --- |
| 25 | 1.7 | **Projektmanagement** |  | 6d | 2011-09-09 | 2011-09-15 | 22 | -0.25d | 0d |  |  | 48h |
| 26 | 1.7.1 | Projektstrukturplan erstellen |  | 3d | 2011-09-09 | 2011-09-12 | 21 | -0.25d | 0d |  | Alexander Matt | 24h |
| 27 | 1.7.2 | Terminplan erstellen |  | 3d | 2011-09-12 | 2011-09-15 | 26 | -0.25d | 0d |  | Alexander Matt | 24h |
| 28 | 2 | **Vorstudie** |  | 14d | 2011-09-15 | 2011-10-01 | 1 | -0.25d | 0d |  |  | 274h |
| 29 | 2.1 | **Recherche** |  | 8d | 2011-09-15 | 2011-09-24 |  | 5.75d |  |  |  | 64h |
| 30 | 2.1.1 | Analysieren von Webseiten zum Projektthema |  | 8d | 2011-09-15 | 2011-09-24 |  | 5.75d |  |  | Die Häkler | 64h |
| 31 | 2.2 | **Prototyp** |  | 14d | 2011-09-15 | 2011-10-01 |  | -0.25d | 0d |  |  | 112h |
| 32 | 2.2.1 | Entwurf |  | 6d | 2011-09-15 | 2011-09-22 |  | -0.25d | 0d |  | Malte Wintner | 48h |
| 33 | 2.2.2 | Implementierung |  | 6d | 2011-09-22 | 2011-09-29 | 32 | -0.25d | 0d |  | Die Häkler | 48h |
| 34 | 2.2.3 | Analyse |  | 2d | 2011-09-29 | 2011-10-01 | 33 | -0.25d | 0d |  | Die Häkler | 16h |
| 35 | 2.3 | **Statusmeeting 1** |  | 8d | 2011-09-15 | 2011-09-24 |  | 0d |  |  |  | 98h |
| 36 | 2.3.1 | Statusbericht verfassen |  | 6.25d | 2011-09-15 | 2011-09-22 |  | 1.75d |  |  | Malte Wintner | 50h |
| 37 | 2.3.2 | Präsentation vorbereiten |  | 6d | 2011-09-15 | 2011-09-22 |  | 2d |  |  | Malte Wintner | 48h |
| 38 | 2.3.3 | Teilnahme am Meeting | milestone | 0d | 2011-09-24 | 2011-09-24 | 36, 37 | 0d |  | must finish on 2011-09-24 | Die Häkler |  |
| 39 | 3 | **Konzeption** |  | 31d | 2011-10-01 | 2011-11-05 | 28 | -0.25d | 0d |  |  | 440h |
| 40 | 3.1 | Systemidee verfassen |  | 1d | 2011-10-01 | 2011-10-03 |  | -0.25d | 0d |  | Joël Poyet | 8h |
| 41 | 3.2 | **Systemanwendungsfälle** |  | 9d | 2011-10-03 | 2011-10-12 | 40 | -0.25d | 0d |  |  | 72h |
| 42 | 3.2.1 | Beschreibung |  | 6d | 2011-10-03 | 2011-10-09 |  | -0.25d | 0d |  | Die Häkler | 48h |
| 43 | 3.2.2 | Gesamtübersicht |  | 3d | 2011-10-09 | 2011-10-12 | 42 | -0.25d | 0d |  | Alexander Matt | 24h |
| 44 | 3.3 | Domänenmodell |  | 9d | 2011-10-12 | 2011-10-22 | 41 | -0.25d | 0d |  | Die Häkler | 72h |
| 45 | 3.4 | Systemablaufmodelle |  | 6d | 2011-10-12 | 2011-10-19 | 41 | 2.75d | 0d |  | Die Häkler | 48h |
| 46 | 3.5 | Schnittstellenbeschreibung |  | 6d | 2011-10-23 | 2011-10-29 | 44 | -0.25d | 0d |  | Die Häkler | 48h |
| 47 | 3.6 | Softwarearchitektur |  | 6d | 2011-10-29 | 2011-11-05 | 46 | -0.25d | 0d |  | Malte Wintner | 48h |
| 48 | 3.7 | Klassenmodelle |  | 6d | 2011-10-19 | 2011-10-26 | 45 | 2.75d | 0d |  | Die Häkler | 48h |
| 49 | 3.8 | Datenmodell |  | 3d | 2011-10-26 | 2011-10-29 | 48 | 5.75d |  |  | Alexander Matt | 24h |
| 50 | 3.9 | Dynamische Modelle |  | 3d | 2011-10-26 | 2011-10-29 | 48 | 2.75d | 0d |  | Die Häkler | 24h |
| 51 | 3.10 | Testkonzept |  | 3d | 2011-10-29 | 2011-11-02 | 50 | 2.75d |  |  | Die Häkler | 24h |
| 52 | 3.11 | Spezifikation der Bedienoberfläche |  | 3d | 2011-10-29 | 2011-11-02 | 50 | 2.75d |  |  | Die Häkler | 24h |

| ID | WBS | Task | Type | Duration | Start | Finish | Predecessors | Total slack | Free slack | Constraint | Resources | Work |
| --- | --- | --- | --- | --- | --- | --- | --- | --- | --- | --- | --- | --- |
| 53 | 4 | **Realisierung** |  | 39d | 2011-11-05 | 2011-12-19 | 39 | -0.25d | 0d |  |  | 1096h |
| 54 | 4.1 | Implementierung |  | 35d | 2011-11-05 | 2011-12-14 |  | -0.25d | 0d |  | Die Häkler | 280h |
| 55 | 4.2 | **Testen** |  | 35d | 2011-11-05 | 2011-12-14 |  | -0.25d | 0d |  |  | 560h |
| 56 | 4.2.1 | Junit-Tests erstellen |  | 35d | 2011-11-05 | 2011-12-14 |  | -0.25d | 0d |  | Die Häkler | 280h |
| 57 | 4.2.2 | Testprotokolle erstellen |  | 35d | 2011-11-05 | 2011-12-14 |  | -0.25d | 0d |  | Die Häkler | 280h |
| 58 | 4.3 | **Statusmeeting 2** |  | 13d | 2011-11-05 | 2011-11-19 |  | 0d |  |  |  | 192h |
| 59 | 4.3.1 | Statusbericht verfassen |  | 12d | 2011-11-05 | 2011-11-18 |  | 1d |  |  | Projektleiter | 96h |
| 60 | 4.3.2 | Präsentation vorbereiten |  | 12d | 2011-11-05 | 2011-11-18 |  | 1d |  |  | Projektleiter | 96h |
| 61 | 4.3.3 | Teilnahme am Meeting | milestone | 0d | 2011-11-19 | 2011-11-19 | 59, 60 | 0d |  | must finish on 2011-11-19 | Die Häkler |  |
| 62 | 4.4 | **Inbetriebnahme** |  | 4d | 2011-12-14 | 2011-12-19 | 55, 54 | -0.25d | 0d |  |  | 64h |
| 63 | 4.4.1 | Lieferobjekte dokumentieren |  | 4d | 2011-12-14 | 2011-12-19 |  | -0.25d | 0d |  | Die Häkler | 32h |
| 64 | 4.4.2 | Installationsanleitung erstellen |  | 4d | 2011-12-14 | 2011-12-19 |  | -0.25d | 0d |  | Die Häkler | 32h |
| 65 | 5 | **Projektabschluss** |  | 18d | 2011-12-19 | 2012-01-08 | 53 | -0.25d | 0d |  |  | 272h |
| 66 | 5.1 | **Dokumentation** |  | 4d | 2011-12-19 | 2011-12-23 |  | -0.25d | 0d |  |  | 160h |
| 67 | 5.1.1 | Dokumente zusammenfügen |  | 4d | 2011-12-19 | 2011-12-23 |  | -0.25d | 0d |  | Die Häkler | 32h |
| 68 | 5.1.2 | Evaluierungsbericht erstellen |  | 4d | 2011-12-19 | 2011-12-23 |  | -0.25d | 0d |  | Die Häkler | 32h |
| 69 | 5.1.3 | Javadoc erstellen |  | 4d | 2011-12-19 | 2011-12-23 |  | -0.25d | 0d |  | Die Häkler | 32h |
| 70 | 5.1.4 | Quellcode auf CD brennen |  | 4d | 2011-12-19 | 2011-12-23 |  | -0.25d | 0d |  | Die Häkler | 32h |
| 71 | 5.1.5 | Bestätigungsformular erstellen |  | 4d | 2011-12-19 | 2011-12-23 |  | -0.25d | 0d |  | Die Häkler | 32h |
| 72 | 5.2 | **Abschlusspräsentation** |  | 14d | 2011-12-23 | 2012-01-08 | 66 | -0.25d | 0d |  |  | 112h |
| 73 | 5.2.1 | Teamsitzung zur Verteilung der Rollen | milestone | 0d | 2011-12-23 | 2011-12-23 |  | -0.25d | 0d |  | Die Häkler |  |
| 74 | 5.2.2 | Vorbereitung des Präsentationsinhalts |  | 14d | 2011-12-23 | 2012-01-08 | 73 | -0.25d | 0d |  | Die Häkler | 112h |
| 75 | 5.2.3 | Abschlusspräsentation durchführen | milestone | 0d | 2012-01-07 | 2012-01-07 | 74 | -0.25d | 0d | must finish on 2012-01-07 | Die Häkler |  |
